# CE64-41

Schedule from MS Project, 2021-08-02 to 2021-11-26, A marks actual dates.

## Calendars

- Standard: Mon-Fri 08:00-12:00, 13:00-17:00; Sat-Sun off.

## Resources

| Resource |
| --- |
| Phongpak |
| Kritsana |
| Chatchai |
| Advisor |

## Schedule

| ID | WBS | Task | Type | Duration | Start | Finish | Complete | Remaining | Total slack |
| --- | --- | --- | --- | --- | --- | --- | --- | --- | --- |
| 1 | 1 | **การวิเคราะห์ความต้องการ** |  | 20d | 2021-08-02 08:00 A | 2021-08-27 17:00 | 14% | 17.14d | 0d |
| 2 | 1.1 | **พัฒนาชื่อโครงการ** |  | 15d | 2021-08-02 08:00 A | 2021-08-20 17:00 A | 100% |  |  |
| 3 | 1.1.1 | ระบุเป้าหมายและวัตถุประสงค์ | manual | 5d | 2021-08-02 08:00 A | 2021-08-06 17:00 A | 100% |  |  |
| 4 | 1.1.2 | พัฒนา ทบทวน อนุมัติ - ชื่อโครงการ | manual | 10d | 2021-08-09 08:00 A | 2021-08-20 17:00 A | 100% |  |  |
| 5 | 1.2 | **ศึกษาข้อมูลและทฤษฎีที่เกี่ยวข้อง** |  | 15d | 2021-08-09 08:00 | 2021-08-27 17:00 |  |  | 0d |
| 6 | 1.2.1 | ศึกษาข้อมูลการเขียนเว็บแอพพลิเคชั่นบนBlockchain | manual | 15d | 2021-08-09 08:00 | 2021-08-27 17:00 |  |  |  |
| 7 | 1.2.2 | ศึกษาข้อมูลการทำงานของBlockchain | manual | 15d | 2021-08-09 08:00 | 2021-08-27 17:00 |  |  |  |
| 8 | 1.2.3 | ศึกษาข้อมูลที่เกี่ยวกับภาษา Solidity | manual | 15d | 2021-08-09 08:00 | 2021-08-27 17:00 |  |  |  |
| 9 | 1.2.4 | ศึกษาข้อมูลที่เกี่ยวกับ Smart Contract | manual | 15d | 2021-08-09 08:00 | 2021-08-27 17:00 |  |  |  |
| 10 | 1.2.5 | ศึกษาข้อมูลที่เกี่ยวกับ Oauth Client | manual | 15d | 2021-08-09 08:00 | 2021-08-27 17:00 |  |  |  |
| 11 | 1.2.6 | ศึกษาข้อมูลของ Oauth Server | manual | 15d | 2021-08-09 08:00 | 2021-08-27 17:00 |  |  |  |
| 12 | 2 | **การออกแบบ** |  | 25d? | 2021-08-30 08:00 | 2021-10-01 17:00 |  |  | 0d |
| 13 | 2.1 | **จัดการและออกแบบClient** |  | 25d | 2021-08-30 08:00 | 2021-10-01 17:00 |  |  | 0d |
| 14 | 2.1.1 | ออกแบบหน้า User Interface | manual | 5d | 2021-08-30 08:00 | 2021-09-03 17:00 |  |  |  |
| 15 | 2.1.2 | ระบบลงทะเบียน(Login/Register) | manual | 5d | 2021-09-06 08:00 | 2021-09-10 17:00 |  |  |  |
| 16 | 2.1.3 | จัดการระบบฐานข้อมูล | manual | 5d | 2021-09-13 08:00 | 2021-09-17 17:00 |  |  |  |
| 17 | 2.1.4 | ตรวจสอบสถานะข้อมูล | manual | 10d | 2021-09-20 08:00 | 2021-10-01 17:00 |  |  |  |
| 18 | 2.2 | **จัดการ และออกแบบ credentialstore** |  | 15d? | 2021-08-30 08:00 | 2021-09-17 17:00 |  |  |  |
| 19 | 2.2.1 | ออกแบบ interface | manual | 5d | 2021-08-30 08:00 | 2021-09-03 17:00 |  |  |  |
| 20 | 2.2.2 | ออกแบบโครงสร้าง | manual | 10d | 2021-09-06 08:00 | 2021-09-17 17:00 |  |  |  |
| 21 | 2.3 | **จัดการ และออกแบบ services** |  | 15d? | 2021-08-30 08:00 | 2021-09-17 17:00 |  |  |  |
| 22 | 2.3.1 | ออกแบบ interface | manual | 5d | 2021-08-30 08:00 | 2021-09-03 17:00 |  |  |  |
| 23 | 2.3.2 | ทดลองการ Authorization | manual | 5d | 2021-09-06 08:00 | 2021-09-10 17:00 |  |  |  |
| 24 | 2.3.3 | ติดต่อกับ Smart Contract | manual | 5d | 2021-09-13 08:00 | 2021-09-17 17:00 |  |  |  |

| ID | WBS | Task | Type | Duration | Start | Finish | Total slack | Constraint |
| --- | --- | --- | --- | --- | --- | --- | --- | --- |
| 25 | 3 | **รายงาน** |  | 66d | 2021-08-26 08:00 | 2021-11-26 08:00 | 0d |  |
| 26 | 3.1 | **ความคืบหน้ารายงาน** |  | 65d | 2021-08-27 08:00 | 2021-11-26 08:00 | 0d |  |
| 27 | 3.1.1 | รายงานความก้าวหน้าครั้งที่ 1 | milestone, manual | 0d | 2021-08-27 08:00 | 2021-08-27 08:00 |  |  |
| 28 | 3.1.2 | รายงานความก้าวหน้าครั้งที่ 2 | milestone, manual | 0d | 2021-09-10 08:00 | 2021-09-10 08:00 |  |  |
| 29 | 3.1.3 | รายงานความก้าวหน้าครั้งที่ 3 | milestone, manual | 0d | 2021-09-24 08:00 | 2021-09-24 08:00 |  |  |
| 30 | 3.1.4 | รายงานความก้าวหน้าครั้งที่ 4 | milestone, manual | 0d | 2021-10-15 08:00 | 2021-10-15 08:00 |  |  |
| 31 | 3.1.5 | รายงานความก้าวหน้าครั้งที่ 5 | milestone, manual | 0d | 2021-11-05 08:00 | 2021-11-05 08:00 |  |  |
| 32 | 3.1.6 | รายงานความก้าวหน้าครั้งที่ 6 | milestone, manual | 0d | 2021-11-26 08:00 | 2021-11-26 08:00 |  |  |
| 33 | 3.2 | **Status Update Meeting** |  | 45.12d | 2021-08-26 08:00 | 2021-10-28 09:00 | 0d |  |
| 34 | 3.2.1 | Status Update Meeting 1 | manual | 1h | 2021-08-26 08:00 | 2021-08-26 09:00 |  | start no earlier than 2021-08-26 08:00 |
| 35 | 3.2.2 | Status Update Meeting 2 | manual | 1h | 2021-09-02 08:00 | 2021-09-02 09:00 |  | start no earlier than 2021-09-02 08:00 |
| 36 | 3.2.3 | Status Update Meeting 3 | manual | 1h | 2021-09-09 08:00 | 2021-09-09 09:00 |  | start no earlier than 2021-09-09 08:00 |
| 37 | 3.2.4 | Status Update Meeting 4 | manual | 1h | 2021-09-16 08:00 | 2021-09-16 09:00 |  | start no earlier than 2021-09-16 08:00 |
| 38 | 3.2.5 | Status Update Meeting 5 | manual | 1h | 2021-09-23 08:00 | 2021-09-23 09:00 |  | start no earlier than 2021-09-23 08:00 |
| 39 | 3.2.6 | Status Update Meeting 6 | manual | 1h | 2021-09-30 08:00 | 2021-09-30 09:00 |  | start no earlier than 2021-09-30 08:00 |
| 40 | 3.2.7 | Status Update Meeting 7 | manual | 1h | 2021-10-07 08:00 | 2021-10-07 09:00 |  | start no earlier than 2021-10-07 08:00 |
| 41 | 3.2.8 | Status Update Meeting 8 | manual | 1h | 2021-10-14 08:00 | 2021-10-14 09:00 |  | start no earlier than 2021-10-14 08:00 |
| 42 | 3.2.9 | Status Update Meeting 9 | manual | 1h | 2021-10-21 08:00 | 2021-10-21 09:00 |  | start no earlier than 2021-10-21 08:00 |
| 43 | 3.2.10 | Status Update Meeting 10 | manual | 1h | 2021-10-28 08:00 | 2021-10-28 09:00 |  | start no earlier than 2021-10-28 08:00 |
